# Atlas_phase1_100h_13Mar-MH

How a schedule from MS Project changed from version to version. A marks actual dates.

## Version 1 (saved 2026-03-13, file Atlas_phase1_100h_13Mar-MH.mpp)

Note of the change: railway deployment

| ID | WBS | Task | Duration | Start | Finish | Predecessors | Complete | Total float | Constraint |
| --- | --- | --- | --- | --- | --- | --- | --- | --- | --- |
| 1 | 1 | **Equipment Recovery** | 11.62d? | 2026-03-02 A | 2026-03-09 |  | 96% | 0d |  |
| 2 | 1.1 | **Microwave Generator** | 11.62d | 2026-03-02 A | 2026-03-09 A |  | 100% |  |  |
| 3 |  | Remove Lab B EM and ship to Petal | 93h | 2026-03-02 A | 2026-03-09 A |  | 100% |  |  |
| 4 |  | Engine Crane Acquisition/Setup | 1d | 2026-03-03 A | 2026-03-03 A |  | 100% |  |  |
| 5 |  | Remove AMP100 EM | 4h | 2026-03-04 A | 2026-03-04 A | 3, 4 | 100% |  |  |
| 6 |  | Install Electromagnet in AMP100 | 4h | 2026-03-05 A | 2026-03-05 A | 5 | 100% |  | start no earlier than 2026-03-05 |
| 7 | 1.2 | **NDIR** | 5.62d? | 2026-03-02 | 2026-03-05 |  | 82% |  |  |
| 8 |  | Ship CO2 Sensor | 1d | 2026-03-03 A | 2026-03-03 A |  | 100% |  |  |
| 9 |  | Install CO2 Sensor | 1h | 2026-03-09 A | 2026-03-09 A |  | 100% |  |  |
| 10 |  | Calibration | 2h | 2026-03-09 | 2026-03-09 | 9 |  |  |  |
| 11 | 1.3 | **Install Equipment** | 7.12d | 2026-03-05 A | 2026-03-09 |  | 92% | 0d |  |
| 12 |  | MFCs | 57h | 2026-03-05 A | 2026-03-09 A |  | 100% |  |  |
| 13 |  | S-Team Tuner | 3h | 2026-03-05 | 2026-03-05 |  |  |  |  |
| 14 |  | Spacer - 3in | 2h | 2026-03-05 | 2026-03-05 |  |  |  |  |
| 15 | 2 | **Safety & Operational Documents** | 17.5d? | 2026-03-02 A | 2026-03-13 |  | 15% | 0d |  |
| 16 | 2.1 | **Update and review SOPs** | 14.62d? | 2026-03-02 A | 2026-03-11 |  | 21% |  |  |
| 17 |  | Protocol for SOP update | 5.62d | 2026-03-09 A | 2026-03-12 A |  | 100% |  |  |
| 18 | 2.1.2 | **Field Operator** | 11.62d | 2026-03-02 | 2026-03-09 |  |  | 0d |  |
| 19 |  | Startup SOP | 11.62d | 2026-03-02 | 2026-03-09 |  |  |  |  |
| 20 |  | Shutdown site operator SOP | 1d | 2026-03-06 | 2026-03-06 |  |  |  |  |
| 21 |  | Review SOPs | 1d | 2026-03-06 | 2026-03-06 |  |  |  |  |
| 22 |  | Startup checklist site | 1d | 2026-03-06 | 2026-03-06 |  |  |  |  |
| 23 |  | Shutdown checklist site | 1d | 2026-03-06 | 2026-03-06 |  |  |  |  |
| 24 | 2.1.3 | **Control Room Operator** | 1d | 2026-03-06 | 2026-03-06 |  |  | 0d |  |
| 25 |  | Startup control room SOP | 1d | 2026-03-06 | 2026-03-06 |  |  |  |  |
| 26 |  | Shutdown control room SOP | 1d | 2026-03-06 | 2026-03-06 |  |  |  |  |
| 27 |  | Review SOPs | 1d | 2026-03-06 | 2026-03-06 |  |  |  |  |
| 28 |  | Startup checklist operator | 1d | 2026-03-06 | 2026-03-06 |  |  |  |  |
| 29 |  | Shutdown checklist operator | 1d | 2026-03-06 | 2026-03-06 |  |  |  |  |
| 30 | 2.1.4 | **Modify all SOPs and checklists for remote 1000 hrs** | 1d | 2026-03-13 | 2026-03-13 |  |  |  |  |
| 31 |  | Operation stratagy | 1d | 2026-03-13 | 2026-03-13 |  |  |  |  |
| 32 | 2.2 | **Petal site operator qualifications** | 1.12d | 2026-03-05 | 2026-03-05 |  |  |  |  |
| 33 |  | Training manual/program | 1d? | 2026-03-05 | 2026-03-05 |  |  |  |  |
| 34 |  | Training test and certification | 4.12d | 2026-03-02 | 2026-03-04 |  |  |  |  |
| 35 |  | Management of change for qualifications | 1d? | 2026-03-05 | 2026-03-05 |  |  |  |  |
| 36 | 2.3 | **Cambridge operator qualifications** | 1.12d | 2026-03-05 | 2026-03-05 |  |  |  |  |
| 37 |  | Training manual/program | 1d? | 2026-03-05 | 2026-03-05 |  |  |  |  |
| 38 |  | Training test and certification | 7.12d | 2026-03-05 | 2026-03-09 |  |  |  |  |
| 39 |  | Management of change for qualifications | 1d? | 2026-03-05 | 2026-03-05 |  |  |  |  |
| 40 | 2.4 | **PSSR for 1000 hours** | 0d | 2026-03-05 | 2026-03-05 | 43 |  | 4.88d |  |
| 41 |  | Emergency response plan | 1d? | 2026-03-02 | 2026-03-02 |  |  |  |  |
| 42 | 3 | **Commissioning** | 19.12d | 2026-03-02 A | 2026-03-14 |  | 26% | 0d |  |
| 43 |  | Pressure Test | 8h | 2026-03-05 | 2026-03-05 |  |  | 1.5d | finish no earlier than 2026-03-05 |
| 44 |  | GLP | 1d? | 2026-03-02 | 2026-03-02 |  |  |  |  |
| 45 |  | AMP100 | 1d? | 2026-03-02 | 2026-03-02 |  |  |  |  |
| 46 |  | Secure Natural Gas | 10.12d | 2026-03-03 A | 2026-03-09 A |  | 100% |  |  |
| 47 |  | Process Condition Testing | 6h | 2026-03-06 | 2026-03-06 | 43, 40 |  | 10.75d |  |
| 48 |  | Train Petal Operators | 5.62d | 2026-03-11 | 2026-03-14 |  |  |  |  |
| 49 | 3.7 | **Training Cambridge Operators** | 19.12d | 2026-03-02 | 2026-03-14 |  |  | 0d |  |
| 50 |  | Dimitri | 8.62d | 2026-03-09 | 2026-03-14 |  |  |  |  |
| 51 |  | Marcelo | 4.12d | 2026-03-02 | 2026-03-04 |  |  |  |  |
| 52 |  | Jorj | 4.12d | 2026-03-02 | 2026-03-04 |  |  |  |  |
| 53 |  | Matt | 4.12d | 2026-03-02 | 2026-03-04 |  |  |  |  |
| 54 | 4 | **Duration runs at KPI conditions** | 4.12d | 2026-03-09 | 2026-03-11 | 1, 15, 40, 46 |  |  |  |
| 55 |  | 8 hours at 2:1 | 1d | 2026-03-09 | 2026-03-09 |  |  |  |  |
| 56 |  | 8 hours at 2.5:1 | 1d | 2026-03-10 | 2026-03-10 |  |  |  |  |
| 57 |  | 8 hours at 3:1 | 1d | 2026-03-11 | 2026-03-11 |  |  |  |  |

## Version 2 (saved 2026-03-24, file 2026 Pyrolysis Petal - 24 Mar 2026.mpp)

Last finish 2026-03-14 → 2026-03-20 (+6d). Complete tasks 9 → 18.

Added:

| ID | Task | Duration | Start | Finish | Resources |
| --- | --- | --- | --- | --- | --- |
| 16 | Signal processing | 2.62d | 2026-03-10 A | 2026-03-11 A |  |
| 19 | **Circulator** | 0d | 2026-02-27 | 2026-02-27 |  |
| 20 | Sairem exchange circulator | 1d? | 2026-03-02 | 2026-03-02 |  |
| 21 | Unistall circulator from Lab B | 1d? | 2026-02-27 | 2026-02-27 |  |
| 22 | Package/ship circulater to Petal | 1d? | 2026-02-27 | 2026-02-27 |  |
| 23 | Data analysis | 2.62d | 2026-03-16 | 2026-03-17 | BL |
| 24 | **Analysis by MW experts** | 4.12d | 2026-03-18 | 2026-03-20 | JO |
| 25 | Site preparation | 1d | 2026-03-18 | 2026-03-18 | JO |
| 26 | Sairem site visit | 2d | 2026-03-19 | 2026-03-20 | AM |

Changed:

| ID | Task | Start | Finish | Duration | Complete | Total float | Predecessors | Other |
| --- | --- | --- | --- | --- | --- | --- | --- | --- |
| 1 | **Equipment Recovery** | 2026-03-02 A → 2026-02-27 A (-3d) | 2026-03-09 → 2026-03-20 (+11d) | 11.62d? → 32.62d? | 96% → 82% |  |  |  |
| 2 | **Electromagnet** |  | 2026-03-09 A → 2026-03-11 A (+2d) | 11.62d → 14.62d |  |  |  | was named Microwave Generator |
| 4 | Engine Crane Acquisition/Setup |  |  |  |  |  |  | resources none → DO |
| 6 | Install Electromagnet in AMP100 |  | 2026-03-05 A → 2026-03-11 A (+6d) | 4h → 40h |  |  |  | constraint start no earlier than 2026-03-05 → finish no earlier than 2026-03-11 |
| 7 | **NDIR** |  | 2026-03-05 → 2026-03-14 (+9d) | 5.62d? → 19.12d | 82% → 45% |  |  |  |
| 8 | Ship CO2 Sensor |  | 2026-03-03 A → 2026-03-09 A (+6d) | 1d → 10.12d |  |  |  |  |
| 9 | Install CO2 Sensor | 2026-03-09 A → 2026-03-03 (-6d) | 2026-03-09 A → 2026-03-11 (+2d) | 1h → 93h | 100% → 0% |  | none → 8 |  |
| 10 | Calibration |  |  | 2h → 8h |  |  |  |  |
| 11 | **Install Equipment** |  | 2026-03-09 → 2026-03-20 (+11d) | 7.12d → 23.62d? | 92% → 99% |  |  |  |
| 12 | **MFCs** | 2026-03-05 A → 2026-03-09 A (+4d) | 2026-03-09 A → 2026-03-13 (+4d) | 57h → 57h? | 100% → 99% |  |  |  |
| 13 | Installation | 2026-03-06 → 2026-03-09 A (+3d) | 2026-03-06 → 2026-03-09 A (+3d) |  | 0% → 100% |  |  | was named Review SOPs; resources JO → none |
| 14 | Troubleshoot Power | 2026-03-02 → 2026-03-10 A (+8d) | 2026-03-09 → 2026-03-11 A (+2d) | 11.62d → 2.62d | 0% → 100% | 0d → none |  | was named Field Operator |
| 15 | Communication | 2026-03-06 → 2026-03-10 A (+4d) | 2026-03-06 → 2026-03-11 A (+5d) | 1d → 2.62d | 0% → 100% | 0d → none |  | was named Control Room Operator |
| 17 | S-Team Tuner | 2026-03-05 A | 2026-03-05 → 2026-03-20 A (+15d) | 3h → 189h | 0% → 100% |  |  |  |
| 18 | Spacer - 3in | 2026-03-05 A | 2026-03-05 → 2026-03-20 A (+15d) | 2h → 189h | 0% → 100% |  |  |  |
| 27 | **Safety & Operational Documents** |  | 2026-03-13 → 2026-03-17 (+4d) | 17.5d? → 23.62d | 15% → 79% | 0d → none |  |  |
| 28 | **Update and review SOPs** |  | 2026-03-11 → 2026-03-16 (+5d) | 14.62d? → 21d | 21% → 90% |  |  |  |
| 29 | Protocol for SOP update |  |  |  |  |  |  | resources none → BL |
| 30 | Startup site operator SOP | 2026-03-02 A | 2026-03-09 A |  | 0% → 100% |  |  | was named Startup SOP |
| 31 | Startup control room SOP | 2026-03-06 A |  |  | 0% → 50% |  |  |  |
| 32 | Shutdown site operator SOP | 2026-03-06 A | 2026-03-06 → 2026-03-10 A (+4d) | 1d → 7.12d | 0% → 100% |  |  |  |
| 34 | Site/operator check SOP |  |  |  |  |  |  | was named Review SOPs |
| 35 | Startup checklist site | 2026-03-06 A | 2026-03-06 → 2026-03-10 A (+4d) | 1d → 7.12d | 0% → 100% |  |  |  |
| 37 | Shutdown checklist site | 2026-03-06 A | 2026-03-06 → 2026-03-10 A (+4d) | 1d → 7.12d | 0% → 100% |  |  |  |
| 39 | **Modify all SOPs and checklists for remote 1000 hrs** |  | 2026-03-13 → 2026-03-14 (+1d) | 1d → 2d |  |  |  |  |
| 41 | **Petal site operator qualifications** |  | 2026-03-05 → 2026-03-17 (+12d) | 1.12d → 18d | 0% → 90% |  |  |  |
| 43 | Training test and certification | 2026-03-02 → 2026-03-09 A (+7d) | 2026-03-04 → 2026-03-13 (+9d) | 4.12d → 7.12d | 0% → 90% |  |  |  |
| 49 | **PSSR for 1000 hours** | 2026-03-05 → 2026-03-11 (+6d) | 2026-03-05 → 2026-03-11 (+6d) |  |  | 4.88d → -4.12d |  |  |
| 51 | **Commissioning** |  | 2026-03-14 → 2026-03-18 (+4d) | 19.12d → 25.12d | 26% → 18% | 0d → 3d |  |  |
| 52 | Pressure Test | 2026-03-05 A | 2026-03-05 → 2026-03-11 A (+6d) | 8h → 40h | 0% → 100% | 1.5d → none |  | constraint finish no earlier than 2026-03-05 → finish no earlier than 2026-03-11; resources BL → DO |
| 53 | GLP | 2026-03-02 → 2026-03-05 (+3d) | 2026-03-02 → 2026-03-18 (+16d) | 1d? → 20.62d |  |  |  |  |
| 54 | AMP100 | 2026-03-02 → 2026-03-05 (+3d) | 2026-03-02 → 2026-03-18 (+16d) | 1d? → 20.62d |  |  |  |  |
| 56 | Process Condition Testing | 2026-03-06 → 2026-03-12 (+6d) | 2026-03-06 → 2026-03-12 (+6d) |  |  | 10.75d → 12.25d |  |  |
